# Proyecto Matricula

Schedule from MS Project, 2017-05-08 to 2017-07-22, A marks actual dates.

## Calendars

- Estándar: Mon-Fri 09:00-13:00, 15:00-19:00; Sat 09:00-12:00, 13:00-18:00; Sun off.

## Resources

| Resource |
| --- |
| Chira |
| Huarote |
| Salinas |
| Huaroto |

## Schedule

| ID | WBS | Task | Type | Duration | Start | Finish | Complete | Remaining | Total slack | Resources | Work | Actual work |
| --- | --- | --- | --- | --- | --- | --- | --- | --- | --- | --- | --- | --- |
| 1 | 1 | **Proyecto Matricula.TE** |  | 66d | 2017-05-08 A | 2017-07-22 | 89% | 7.54d | 0d | Chira; Huaroto; Salinas | 12096h | 8192h |
| 2 | 1.1 | **Proceso de Gestion** |  | 63d | 2017-05-08 A | 2017-07-19 | 89% | 7.11d | 0d | Chira; Huaroto; Salinas | 3800h | 2136h |
| 3 | 1.1.1 | **Inicio** |  | 1d | 2017-05-08 A | 2017-05-08 | 99% | 0d | 0d | Chira; Huaroto; Salinas | 48h | 24h |
| 4 | 1.1.1.1 | Revision de la Metodologia del trabajo | manual | 1d | 2017-05-08 A | 2017-05-08 A | 100% |  |  | Chira; Huaroto; Salinas | 24h | 24h |
| 5 | 1.1.2 | **Planificacion** |  | 9d | 2017-05-08 A | 2017-05-17 A | 100% |  |  | Chira; Huaroto; Salinas | 960h | 960h |
| 6 | 1.1.2.1 | **Plan del Proyecto** |  | 9d | 2017-05-08 A | 2017-05-17 A | 100% |  |  | Chira; Huaroto; Salinas | 768h | 768h |
| 7 | 1.1.2.1.1 | **Elaboracion del Plan del Proyecto** |  | 8d | 2017-05-08 A | 2017-05-16 A | 100% |  |  | Chira; Huaroto; Salinas | 392h | 392h |
| 8 | 1.1.2.1.1.1 | Definir Nombre del Proyecto | manual | 1d | 2017-05-08 A | 2017-05-08 A | 100% |  |  | Chira; Huaroto; Salinas | 24h | 24h |
| 9 | 1.1.2.1.1.2 | Definir Objetivos de Proyecto | manual | 1d | 2017-05-08 A | 2017-05-08 A | 100% |  |  | Chira; Huaroto; Salinas | 24h | 24h |
| 10 | 1.1.2.1.1.3 | Identificación de Riesgos del Proyecto | manual | 1d | 2017-05-08 A | 2017-05-08 A | 100% |  |  | Chira; Huaroto; Salinas | 24h | 24h |
| 11 | 1.1.2.1.1.4 | Necesidades del Proyecto | manual | 1d | 2017-05-08 A | 2017-05-08 A | 100% |  |  | Chira; Huaroto; Salinas | 24h | 24h |
| 12 | 1.1.2.1.1.5 | Elaborar Documento de Riesgos del Proyecto | manual | 5d | 2017-05-09 A | 2017-05-15 A | 100% |  |  | Huaroto | 40h | 40h |
| 13 | 1.1.2.1.1.6 | Elaboración de Cronograma Detallado | manual | 5d | 2017-05-09 A | 2017-05-15 A | 100% |  |  | Salinas | 40h | 40h |
| 14 | 1.1.2.1.1.7 | Elaborar Documento Plan de Proyecto | manual | 5d | 2017-05-09 A | 2017-05-15 A | 100% |  |  | Chira | 40h | 40h |
| 15 | 1.1.2.1.1.8 | Traspaso de Información | manual | 1d | 2017-05-16 A | 2017-05-16 A | 100% |  |  | Chira | 8h | 8h |
| 16 | 1.1.2.1.2 | **Revisión Interna del Plan de Proyecto** |  | 2d | 2017-05-16 A | 2017-05-17 A | 100% |  |  | Chira; Huaroto; Salinas | 112h | 112h |
| 17 | 1.1.2.1.2.1 | Revisión de Plan de Proyecto por el equipo del Proyecto | manual | 1d | 2017-05-16 A | 2017-05-16 A | 100% |  |  | Chira; Huaroto; Salinas | 24h | 24h |
| 18 | 1.1.2.1.2.2 | Ajustes al Plan de Proyecto | manual | 1d | 2017-05-16 A | 2017-05-16 A | 100% |  |  | Chira; Huaroto; Salinas | 24h | 24h |
| 19 | 1.1.2.1.2.3 | Elaborar Acta de REVISION INTERNA del PLAN DE PROYECTO | manual | 1d | 2017-05-16 A | 2017-05-16 A | 100% |  |  | Salinas | 8h | 8h |
| 20 | 1.1.2.1.2.4 | Traspaso de Información | manual | 1d | 2017-05-17 A | 2017-05-17 A | 100% |  |  | Chira | 8h | 8h |
| 21 | 1.1.2.1.3 | **Gestión de Configuración** |  | 1d | 2017-05-17 A | 2017-05-17 A | 100% |  |  | Chira; Huaroto; Salinas | 72h | 72h |
| 22 | 1.1.2.1.3.1 | Establecer Repositorio de Datos | manual | 1d | 2017-05-17 A | 2017-05-17 A | 100% |  |  | Chira; Huaroto; Salinas | 24h | 24h |
| 23 | 1.1.2.1.3.2 | Asignar Gestor de Configuración | manual | 1d | 2017-05-17 A | 2017-05-17 A | 100% |  |  | Chira; Huaroto; Salinas | 24h | 24h |
| 24 | 1.1.3 | **Asignación, Ejecución, Seguimiento y Control** |  | 25d | 2017-05-17 A | 2017-06-14 A | 100% |  |  | Chira; Huaroto; Salinas | 1152h | 1152h |
| 25 | 1.1.3.1 | **Desarrollo del Área de Proceso PP- PMC** |  | 3d | 2017-05-17 A | 2017-05-19 A | 100% |  |  | Chira; Huaroto; Salinas | 128h | 128h |
| 26 | 1.1.3.1.1 | Elaborar Plantilla de Reunión Externa Mensual | manual | 1d | 2017-05-17 A | 2017-05-17 A | 100% |  |  | Salinas | 8h | 8h |
| 27 | 1.1.3.1.2 | Elaborar Plantilla de Informe de Avances Quincenales | manual | 1d | 2017-05-17 A | 2017-05-17 A | 100% |  |  | Salinas | 8h | 8h |
| 28 | 1.1.3.1.3 | Elaborar Plantillas de Actas de Reunión Interna Quincenal | manual | 1d | 2017-05-17 A | 2017-05-17 A | 100% |  |  | Salinas | 8h | 8h |
| 29 | 1.1.3.1.4 | Elaborar Plantilla de Gestion de Riesgos | manual | 1d | 2017-05-17 A | 2017-05-17 A | 100% |  |  | Huaroto | 8h | 8h |
| 30 | 1.1.3.1.5 | Elaborar Formato de Aceptación de Entregables | manual | 1d | 2017-05-17 A | 2017-05-17 A | 100% |  |  | Salinas | 8h | 8h |
| 31 | 1.1.3.1.6 | Elaborar Documento de Proceso de Gestión de Procesos PP-PMC | manual | 1d | 2017-05-18 A | 2017-05-18 A | 100% |  |  | Huaroto | 8h | 8h |
| 32 | 1.1.3.1.7 | Traspaso de Información | manual | 1d | 2017-05-19 A | 2017-05-19 A | 100% |  |  | Chira | 8h | 8h |

| ID | WBS | Task | Type | Duration | Start | Finish | Complete | Resources | Work | Actual work |
| --- | --- | --- | --- | --- | --- | --- | --- | --- | --- | --- |
| 33 | 1.1.3.2 | **Desarrollo del Área de Proceso REQM** |  | 3d | 2017-05-25 A | 2017-05-27 A | 100% | Chira; Huaroto; Salinas | 88h | 88h |
| 34 | 1.1.3.2.1 | Elaborar Formato de Solicitud a Cambios a Requerimientos | manual | 1d | 2017-05-25 A | 2017-05-25 A | 100% | Huaroto | 8h | 8h |
| 35 | 1.1.3.2.2 | Elaborar Formato de Matriz de Trazabilidad de Requerimientos | manual | 1d | 2017-05-25 A | 2017-05-25 A | 100% | Huaroto | 8h | 8h |
| 36 | 1.1.3.2.3 | Elaborar Formato de Registro de Cambios a Requerimientos | manual | 1d | 2017-05-25 A | 2017-05-25 A | 100% | Huaroto | 8h | 8h |
| 37 | 1.1.3.2.4 | Elaborar Documento de Proceso de Gestión de cambios de Requerimientos | manual | 1d | 2017-05-26 A | 2017-05-26 A | 100% | Huaroto | 8h | 8h |
| 38 | 1.1.3.2.5 | Traspaso de Información | manual | 1d | 2017-05-27 A | 2017-05-27 A | 100% | Chira | 8h | 8h |
| 39 | 1.1.3.3 | **Desarrollo del Área de Proceso PPQA** |  | 4d | 2017-05-30 A | 2017-06-02 A | 100% | Chira; Huaroto; Salinas | 144h | 144h |
| 40 | 1.1.3.3.1 | Elaborar Formato de CheckList de Aseguramiento de la Calidad | manual | 1d | 2017-05-30 A | 2017-05-30 A | 100% | Salinas | 8h | 8h |
| 41 | 1.1.3.3.2 | Elaborar Herramienta de Gestión de Aseguramiento de la Calidad | manual | 1d | 2017-05-31 A | 2017-05-31 A | 100% | Salinas | 8h | 8h |
| 42 | 1.1.3.3.3 | Elaborar Plantilla de Informe General de QA | manual | 1d | 2017-05-31 A | 2017-05-31 A | 100% | Salinas | 8h | 8h |
| 43 | 1.1.3.3.4 | Elaborar Formato de Solicitud de Control de Calidad del Producto | manual | 1d | 2017-06-01 A | 2017-06-01 A | 100% | Salinas | 8h | 8h |
| 44 | 1.1.3.3.5 | Elaborar documento de Proceso de Aseguramiento de la calidad | manual | 1d | 2017-06-01 A | 2017-06-01 A | 100% | Salinas | 8h | 8h |
| 45 | 1.1.3.3.6 | Traspaso de Información | manual | 1d | 2017-06-02 A | 2017-06-02 A | 100% | Chira | 8h | 8h |
| 46 | 1.1.3.4 | **Desarrollo del Área de Proceso MA** |  | 5d | 2017-06-03 A | 2017-06-08 A | 100% | Chira; Huaroto; Salinas | 184h | 184h |
| 47 | 1.1.3.4.1 | Elaborar Formato de Ficha de Métricas de Numero de N Conformidades de Producto | manual | 1d | 2017-06-03 A | 2017-06-03 A | 100% | Chira | 8h | 8h |
| 48 | 1.1.3.4.2 | Elaborar Formato de Ficha de Métricas de Índice de Cambios de Ítems de Configuración | manual | 1d | 2017-06-03 A | 2017-06-03 A | 100% | Chira | 8h | 8h |
| 49 | 1.1.3.4.3 | Elaborar Formato de Ficha de Métricas de Volatilidad de Requerimientos | manual | 1d | 2017-06-05 A | 2017-06-05 A | 100% | Chira | 8h | 8h |
| 50 | 1.1.3.4.4 | Elaborar Formato de Ficha de Métricas de Exposición al Riesgo | manual | 1d | 2017-06-05 A | 2017-06-05 A | 100% | Chira | 8h | 8h |
| 51 | 1.1.3.4.5 | Elaborar Formato de Tablero de Métricas | manual | 1d | 2017-06-06 A | 2017-06-06 A | 100% | Salinas; Chira; Huaroto | 24h | 24h |
| 52 | 1.1.3.4.6 | Traspaso de Información | manual | 1d | 2017-06-08 A | 2017-06-08 A | 100% | Chira | 8h | 8h |
| 53 | 1.1.3.5 | **Desarrollo del Área de Proceso CM** |  | 3d | 2017-06-12 A | 2017-06-14 A | 100% | Chira; Huaroto; Salinas | 104h | 104h |
| 54 | 1.1.3.5.1 | Elaborar Formato de Registro de Ítems de Configuración | manual | 1d | 2017-06-12 A | 2017-06-12 A | 100% | Huaroto | 8h | 8h |
| 55 | 1.1.3.5.2 | Elaborar Formato de Solicitud de Accesos | manual | 1d | 2017-06-12 A | 2017-06-12 A | 100% | Huaroto | 8h | 8h |
| 56 | 1.1.3.5.3 | Elaborar Documento de Proceso de Gestión de Configuración | manual | 1d | 2017-06-13 A | 2017-06-13 A | 100% | Huaroto | 8h | 8h |
| 57 | 1.1.3.5.4 | Traspaso de Información | manual | 1d | 2017-06-14 A | 2017-06-14 A | 100% | Chira | 8h | 8h |

| ID | WBS | Task | Type | Duration | Start | Finish | Complete | Actual start | Total slack | Resources | Work | Actual work |
| --- | --- | --- | --- | --- | --- | --- | --- | --- | --- | --- | --- | --- |
| 58 | 1.1.4 | **Cierre** |  | 1d | 2017-07-19 | 2017-07-19 |  |  | 0d | Chira; Huaroto; Salinas | 128h |  |
| 59 | 1.1.4.1 | **Cierre de Proyecto** |  | 1d | 2017-07-19 | 2017-07-19 |  |  | 0d | Chira; Huaroto; Salinas | 40h |  |
| 60 | 1.1.4.1.1 | Revisión de Entregables del Proyecto | manual | 1d | 2017-07-19 | 2017-07-19 |  |  |  |  |  |  |
| 61 | 1.1.4.1.2 | Elaboración del Acta de Aceptación y Cierre del Proyecto | manual | 1d | 2017-07-19 | 2017-07-19 |  |  |  | Salinas | 8h |  |
| 62 | 1.1.4.1.3 | Traspaso de Información | manual | 1d | 2017-07-19 | 2017-07-19 |  |  |  | Chira | 8h |  |
| 63 | 1.1.4.2 | **Relatorio de Proyecto** |  | 1d | 2017-07-19 | 2017-07-19 |  |  | 0d | Chira; Huaroto; Salinas | 64h |  |
| 64 | 1.1.4.2.1 | Elaborar Relatorio de Proyecto | manual | 1d | 2017-07-19 | 2017-07-19 |  |  |  | Huaroto | 8h |  |
| 65 | 1.1.4.2.2 | Revisión y ajustes de Relatorio por el equipo del Proyecto | manual | 1d | 2017-07-19 | 2017-07-19 |  |  |  | Chira; Huaroto; Salinas | 24h |  |
| 66 | 1.1.4.2.3 | Revisión de Relatorio | manual | 1d | 2017-07-19 | 2017-07-19 |  |  |  |  |  |  |
| 67 | 1.1.4.2.4 | Traspaso de Información | manual | 1d | 2017-07-19 | 2017-07-19 |  |  |  | Chira | 8h |  |
| 68 | 1.2 | **Proceso de Ingeniería** |  | 54d | 2017-05-17 | 2017-07-18 A | 100% | 2017-06-05 |  | Chira; Huaroto; Salinas | 3296h | 3296h |
| 69 | 1.2.1 | **Software Matricula.TE** |  | 54d | 2017-05-17 | 2017-07-18 A | 100% | 2017-06-05 |  | Chira; Huaroto; Salinas | 2528h | 2528h |
| 70 | 1.2.1.1 | **Requerimientos** |  | 2d | 2017-06-22 A | 2017-06-23 A | 100% |  |  | Chira; Huaroto; Salinas | 80h | 80h |
| 71 | 1.2.1.1.1 | Desarrollar Plan de Proyecto | manual | 1d | 2017-06-22 A | 2017-06-22 A | 100% |  |  | Chira | 8h | 8h |
| 72 | 1.2.1.1.2 | Elaborar Matriz de Trazabilidad de Requerimientos | manual | 1d | 2017-06-23 A | 2017-06-23 A | 100% |  |  | Huarote | 8h | 8h |
| 73 | 1.2.1.1.3 | Elaborar Lista Maestra de Requerimientos | manual | 1d | 2017-06-23 A | 2017-06-23 A | 100% |  |  | Salinas | 8h | 8h |
| 74 | 1.2.1.1.4 | Traspaso de Información | manual | 1d | 2017-06-23 A | 2017-06-23 A | 100% |  |  | Chira | 8h | 8h |
| 75 | 1.2.1.2 | **Análisis** |  | 5d | 2017-06-26 A | 2017-06-30 A | 100% |  |  | Chira; Huaroto; Salinas | 248h | 248h |
| 76 | 1.2.1.2.1 | Revisión de Matriz de Trazabilidad de Requerimientos | manual | 1d | 2017-06-26 A | 2017-06-26 A | 100% |  |  | Chira | 8h | 8h |
| 77 | 1.2.1.2.2 | Elaborar Documento de Análisis | manual | 1d | 2017-06-26 A | 2017-06-26 A | 100% |  |  | Salinas | 8h | 8h |
| 78 | 1.2.1.2.3 | **Casos de Uso** |  | 2d | 2017-06-27 A | 2017-06-28 A | 100% |  |  | Chira; Huaroto; Salinas | 96h | 96h |
| 79 | 1.2.1.2.3.1 | **Caso de Uso Modulo Administrativo** |  | 1d | 2017-06-27 A | 2017-06-27 A | 100% |  |  | Chira | 24h | 24h |
| 80 | 1.2.1.2.3.1.1 | Entender la problemática actual | manual | 1d | 2017-06-27 A | 2017-06-27 A | 100% |  |  | Chira | 8h | 8h |
| 81 | 1.2.1.2.3.1.2 | Elaborar Casos de Uso | manual | 1d | 2017-06-27 A | 2017-06-27 A | 100% |  |  | Chira | 8h | 8h |

| ID | WBS | Task | Type | Duration | Start | Finish | Complete | Resources | Work | Actual work |
| --- | --- | --- | --- | --- | --- | --- | --- | --- | --- | --- |
| 82 | 1.2.1.2.3.2 | **Caso de Uso Modulo de Alumnos** |  | 1d | 2017-06-28 A | 2017-06-28 A | 100% | Salinas | 24h | 24h |
| 83 | 1.2.1.2.3.2.1 | Entender la problemática actual | manual | 1d | 2017-06-28 A | 2017-06-28 A | 100% | Salinas | 8h | 8h |
| 84 | 1.2.1.2.3.2.2 | Elaborar Casos de Uso | manual | 1d | 2017-06-28 A | 2017-06-28 A | 100% | Salinas | 8h | 8h |
| 85 | 1.2.1.2.4 | Actualizar Matriz de Trazabilidad de Requerimientos | manual | 1d | 2017-06-29 A | 2017-06-29 A | 100% | Huaroto | 8h | 8h |
| 86 | 1.2.1.2.5 | Traspaso de Información | manual | 1d | 2017-06-30 A | 2017-06-30 A | 100% | Chira | 8h | 8h |
| 87 | 1.2.1.3 | **Diseño** |  | 2d | 2017-07-03 A | 2017-07-04 A | 100% | Chira; Huaroto; Salinas | 72h | 72h |
| 88 | 1.2.1.3.1 | Elaborar Documento de Diseño | manual | 1d | 2017-07-03 A | 2017-07-03 A | 100% | Huarote | 8h | 8h |
| 89 | 1.2.1.3.2 | Actualizar Matriz de Trazabilidad de Requerimientos | manual | 1d | 2017-07-03 A | 2017-07-03 A | 100% | Salinas | 8h | 8h |
| 90 | 1.2.1.3.3 | Traspaso de Información | manual | 1d | 2017-07-04 A | 2017-07-04 A | 100% | Chira | 8h | 8h |
| 91 | 1.2.1.4 | **Construcción** |  | 8d | 2017-07-05 A | 2017-07-13 A | 100% | Chira; Huaroto; Salinas | 744h | 744h |
| 92 | 1.2.1.4.1 | **Modulo Administrativo** |  | 4d | 2017-07-05 A | 2017-07-08 A | 100% | Chira; Huaroto; Salinas | 248h | 248h |
| 93 | 1.2.1.4.1.1 | **Construcción de Modulo** |  | 4d | 2017-07-05 A | 2017-07-08 A | 100% | Chira; Huaroto; Salinas | 152h | 152h |
| 94 | 1.2.1.4.1.1.1 | Login | manual | 1d | 2017-07-05 A | 2017-07-05 A | 100% | Salinas | 8h | 8h |
| 95 | 1.2.1.4.1.1.2 | Registro de Alumno | manual | 2d | 2017-07-05 A | 2017-07-06 A | 100% | Chira | 16h | 16h |
| 96 | 1.2.1.4.1.1.3 | Asignacion de Horarios | manual | 1d | 2017-07-06 A | 2017-07-06 A | 100% | Salinas | 8h | 8h |
| 97 | 1.2.1.4.1.1.4 | Emision de Reportes de Notas | manual | 1d | 2017-07-07 A | 2017-07-07 A | 100% | Chira | 8h | 8h |
| 98 | 1.2.1.4.1.1.5 | Emision de Reportes de Matricula | manual | 1d | 2017-07-08 A | 2017-07-08 A | 100% | Salinas | 8h | 8h |
| 99 | 1.2.1.4.1.1.6 | Traspaso de Información | manual | 1d | 2017-07-08 A | 2017-07-08 A | 100% | Chira | 8h | 8h |
| 100 | 1.2.1.4.2 | **Modulo de Alumnos** |  | 4d | 2017-07-10 A | 2017-07-13 A | 100% | Chira; Huaroto; Salinas | 272h | 272h |
| 101 | 1.2.1.4.2.1 | **Construcción de Modulo** |  | 4d | 2017-07-10 A | 2017-07-13 A | 100% | Chira; Huaroto; Salinas | 176h | 176h |
| 102 | 1.2.1.4.2.1.1 | Login | manual | 1d | 2017-07-10 A | 2017-07-10 A | 100% | Chira | 8h | 8h |
| 103 | 1.2.1.4.2.1.2 | Visualizacion Cursos Disponibles | manual | 2d | 2017-07-10 A | 2017-07-11 A | 100% | Chira; Salinas | 32h | 32h |
| 104 | 1.2.1.4.2.1.3 | Selección de Cursos | manual | 1d | 2017-07-11 A | 2017-07-11 A | 100% | Salinas | 8h | 8h |
| 105 | 1.2.1.4.2.1.4 | Emision de reportes de Notas | manual | 1d | 2017-07-12 A | 2017-07-12 A | 100% | Salinas; Chira | 16h | 16h |
| 106 | 1.2.1.4.2.1.5 | Exportar Matricula | manual | 1d | 2017-07-13 A | 2017-07-13 A | 100% | Chira | 8h | 8h |
| 107 | 1.2.1.4.2.1.6 | Traspaso de Información | manual | 1d | 2017-07-13 A | 2017-07-13 A | 100% | Chira | 8h | 8h |
| 108 | 1.2.1.4.3 | Actualizar Matriz de Trazabilidad de Requerimientos | manual | 1d | 2017-07-13 A | 2017-07-13 A | 100% | Chira; Huaroto; Salinas | 24h | 24h |
| 109 | 1.2.1.4.4 | Traspaso de Información | manual | 1d | 2017-07-13 A | 2017-07-13 A | 100% | Chira | 8h | 8h |

| ID | WBS | Task | Type | Duration | Start | Finish | Complete | Total slack | Constraint | Resources | Work | Actual work |
| --- | --- | --- | --- | --- | --- | --- | --- | --- | --- | --- | --- | --- |
| 110 | 1.2.1.5 | **Pruebas** |  | 3d | 2017-07-14 A | 2017-07-17 A | 100% |  |  | Chira; Huaroto; Salinas | 344h | 344h |
| 111 | 1.2.1.5.1 | **Pruebas Funcionales** |  | 1d | 2017-07-14 A | 2017-07-14 A | 100% |  |  | Chira; Huaroto; Salinas | 136h | 136h |
| 112 | 1.2.1.5.1.1 | **Modulo de Matricula** |  | 1d | 2017-07-14 A | 2017-07-14 A | 100% |  |  | Chira; Huaroto; Salinas | 56h | 56h |
| 113 | 1.2.1.5.1.1.1 | Elaborar Prueba funcional del Modulo | manual | 1d | 2017-07-14 A | 2017-07-14 A | 100% |  |  | Huaroto; Salinas | 16h | 16h |
| 114 | 1.2.1.5.1.1.2 | Elaborar Informe de Prueba | manual | 1d | 2017-07-14 A | 2017-07-14 A | 100% |  |  | Chira | 8h | 8h |
| 115 | 1.2.1.5.1.1.3 | Traspaso de Información | manual | 1d | 2017-07-14 A | 2017-07-14 A | 100% |  |  | Chira | 8h | 8h |
| 116 | 1.2.1.5.1.2 | **Modulo de Emision de Estado** |  | 1d | 2017-07-14 A | 2017-07-14 A | 100% |  |  | Chira; Huaroto; Salinas | 56h | 56h |
| 117 | 1.2.1.5.1.2.1 | Elaborar Prueba funcional de Modulo | manual | 1d | 2017-07-14 A | 2017-07-14 A | 100% |  |  | Huaroto; Salinas | 16h | 16h |
| 118 | 1.2.1.5.1.2.2 | Elaborar Informe de Prueba | manual | 1d | 2017-07-14 A | 2017-07-14 A | 100% |  |  | Salinas | 8h | 8h |
| 119 | 1.2.1.5.1.2.3 | Traspaso de Información | manual | 1d | 2017-07-14 A | 2017-07-14 A | 100% |  |  | Chira | 8h | 8h |
| 120 | 1.2.1.5.2 | **Pruebas de Sistema** |  | 1d | 2017-07-15 A | 2017-07-15 A | 100% |  |  | Chira; Huaroto; Salinas | 96h | 96h |
| 121 | 1.2.1.5.2.1 | Elaborar Pruebas de Sistema |  | 1d | 2017-07-15 A | 2017-07-15 A | 100% |  | start no earlier than 2017-07-15 | Chira; Huaroto; Salinas | 24h | 24h |
| 122 | 1.2.1.5.2.2 | Elaborar Informe de Prueba | manual | 1d | 2017-07-15 A | 2017-07-15 A | 100% |  |  | Chira; Huaroto; Salinas | 24h | 24h |
| 123 | 1.2.1.5.2.3 | Traspaso de Información | manual | 1d | 2017-07-15 A | 2017-07-15 A | 100% |  |  | Chira; Huaroto; Salinas | 24h | 24h |
| 124 | 1.2.1.5.3 | Elaborar Manual de Sistema | manual | 1d | 2017-07-17 A | 2017-07-17 A | 100% |  |  | Chira | 8h | 8h |
| 125 | 1.2.1.5.4 | Elaborar Matriz de Trazabilidad de Requerimientos Final | manual | 1d | 2017-07-17 A | 2017-07-17 A | 100% |  |  | Chira; Huaroto; Salinas | 24h | 24h |
| 126 | 1.2.1.5.5 | Traspaso de Información | manual | 1d | 2017-07-17 A | 2017-07-17 A | 100% |  |  | Chira | 8h | 8h |
| 127 | 1.2.1.6 | **Implementación** |  | 2d | 2017-07-17 A | 2017-07-18 A | 100% |  |  | Chira; Huaroto; Salinas | 128h | 128h |
| 128 | 1.2.1.6.1 | **Guías** |  | 2d | 2017-07-17 A | 2017-07-18 A | 100% |  |  | Chira; Huaroto; Salinas | 72h | 72h |
| 129 | 1.2.1.6.1.1 | Elaborar Manual de paso a produccion | manual | 1d | 2017-07-17 A | 2017-07-17 A | 100% |  |  | Huaroto | 8h | 8h |
| 130 | 1.2.1.6.1.2 | Elaborar Manual de Usuario | manual | 1d | 2017-07-17 A | 2017-07-17 A | 100% |  |  | Chira | 8h | 8h |
| 131 | 1.2.1.6.1.3 | Elaborar Guia de Instalacion | manual | 1d | 2017-07-18 A | 2017-07-18 A | 100% |  |  | Huaroto | 8h | 8h |
| 132 | 1.2.1.6.2 | Traspaso de Información | manual | 1d | 2017-07-18 A | 2017-07-18 A | 100% |  |  | Chira | 8h | 8h |
| 133 | 1.3 | **Inducción de personal** |  | 3d | 2017-07-20 | 2017-07-22 |  | 0d |  | Chira; Huaroto; Salinas | 200h |  |
| 134 | 1.3.1 | Establecer personal para inducción | manual | 1d | 2017-07-20 | 2017-07-20 |  |  |  | Huaroto; Chira; Salinas | 24h |  |
| 135 | 1.3.2 | Realizar inducción al personal | manual | 1d | 2017-07-21 | 2017-07-21 |  |  |  | Chira; Huaroto; Salinas | 24h |  |
| 136 | 1.3.3 | Verificar proceso de inducción | manual | 1d | 2017-07-21 | 2017-07-21 |  |  |  | Chira; Huaroto; Salinas | 24h |  |
| 137 | 1.3.4 | Elaborar Certificado de Inducción de Personal | manual | 1d | 2017-07-22 | 2017-07-22 |  |  |  | Chira; Huaroto; Salinas | 24h |  |
| 138 | 1.3.5 | Traspaso de Información | manual | 1d | 2017-07-22 | 2017-07-22 |  |  |  | Chira | 8h |  |
| 139 | 1.3.6 | Pasar a área de Desarrollo a Personal Capacitado | manual | 1d | 2017-07-22 | 2017-07-22 |  |  |  | Chira; Huaroto; Salinas | 24h |  |

| ID | WBS | Task | Type | Duration | Start | Finish | Complete | Resources | Work | Actual work |
| --- | --- | --- | --- | --- | --- | --- | --- | --- | --- | --- |
| 140 | 1.4 | **Aseguramiento de la Calidad del Proyecto** |  | 6d | 2017-06-26 A | 2017-07-01 A | 100% | Chira; Huaroto; Salinas | 288h | 288h |
| 141 | 1.4.1 | **Revisión** |  | 3d | 2017-06-26 A | 2017-06-28 A | 100% | Chira; Huaroto; Salinas | 120h | 120h |
| 142 | 1.4.1.1 | Elaborar Herramienta de Gestion de Aseguramiento de la Calidad | manual | 1d | 2017-06-26 A | 2017-06-26 A | 100% | Huaroto; Salinas | 16h | 16h |
| 143 | 1.4.1.2 | Elaborar CheckList de Aseguramiento de la Calidad | manual | 1d | 2017-06-27 A | 2017-06-27 A | 100% | Chira; Huaroto; Salinas | 24h | 24h |
| 144 | 1.4.1.3 | Traspaso de Información | manual | 1d | 2017-06-28 A | 2017-06-28 A | 100% | Chira | 8h | 8h |
| 145 | 1.4.2 | Elaborar Matriz de Seguimiento del Proyecto | manual | 1d | 2017-06-29 A | 2017-06-29 A | 100% | Huaroto | 8h | 8h |
| 146 | 1.4.3 | Elaborar Informe de Revisión General del QA | manual | 1d | 2017-06-30 A | 2017-06-30 A | 100% | Salinas | 8h | 8h |
| 147 | 1.4.4 | Traspaso de Información | manual | 1d | 2017-07-01 A | 2017-07-01 A | 100% | Chira | 8h | 8h |
| 148 | 1.5 | **Reuniones Internas** |  | 56d | 2017-05-08 A | 2017-07-11 A | 100% | Chira; Huaroto; Salinas | 1544h | 1544h |
| 149 | 1.5.1 | **Reunión Inicial** |  | 1d | 2017-05-08 A | 2017-05-08 A | 100% | Chira; Huaroto; Salinas | 40h | 40h |
| 150 | 1.5.1.1 | Elaborar Acta de Reunión | manual | 1d | 2017-05-08 A | 2017-05-08 A | 100% | Salinas | 8h | 8h |
| 151 | 1.5.1.2 | Traspaso de Información | manual | 1d | 2017-05-08 A | 2017-05-08 A | 100% | Chira | 8h | 8h |
| 152 | 1.5.2 | **Reunión Quincenal 1** |  | 1d | 2017-05-25 A | 2017-05-25 A | 100% | Chira; Huaroto; Salinas | 40h | 40h |
| 153 | 1.5.2.1 | Elaborar Acta de Reunión | manual | 1d | 2017-05-25 A | 2017-05-25 A | 100% | Salinas | 8h | 8h |
| 154 | 1.5.2.2 | Traspaso de Información | manual | 1d | 2017-05-25 A | 2017-05-25 A | 100% | Chira | 8h | 8h |
| 155 | 1.5.3 | **Reunión Quincenal 2** |  | 1d | 2017-06-10 A | 2017-06-10 A | 100% | Chira; Huaroto; Salinas | 40h | 40h |
| 156 | 1.5.3.1 | Elaborar Acta de Reunión | manual | 1d | 2017-06-10 A | 2017-06-10 A | 100% | Salinas | 8h | 8h |
| 157 | 1.5.3.2 | Traspaso de Información | manual | 1d | 2017-06-10 A | 2017-06-10 A | 100% | Chira | 8h | 8h |
| 158 | 1.5.4 | **Reunión Quincenal 3** |  | 1d | 2017-06-26 A | 2017-06-26 A | 100% | Chira; Huaroto; Salinas | 40h | 40h |
| 159 | 1.5.4.1 | Elaborar Acta de Reunión | manual | 1d | 2017-06-26 A | 2017-06-26 A | 100% | Salinas | 8h | 8h |
| 160 | 1.5.4.2 | Traspaso de Información | manual | 1d | 2017-06-26 A | 2017-06-26 A | 100% | Chira | 8h | 8h |
| 161 | 1.5.5 | **Reunión Quincenal 4** |  | 1d | 2017-07-11 A | 2017-07-11 A | 100% | Chira; Huaroto; Salinas | 40h | 40h |
| 162 | 1.5.5.1 | Elaborar Acta de Reunión | manual | 1d | 2017-07-11 A | 2017-07-11 A | 100% | Salinas | 8h | 8h |
| 163 | 1.5.5.2 | Traspaso de Información | manual | 1d | 2017-07-11 A | 2017-07-11 A | 100% | Chira | 8h | 8h |

| ID | WBS | Task | Type | Duration | Start | Finish | Complete | Remaining | Total slack | Resources | Work | Actual work |
| --- | --- | --- | --- | --- | --- | --- | --- | --- | --- | --- | --- | --- |
| 164 | 1.6 | **Reuniones Externas - CLIENTE** |  | 49d | 2017-05-24 A | 2017-07-19 | 67% | 16.33d | 0d | Chira; Huaroto; Salinas | 1384h | 928h |
| 165 | 1.6.1 | **Primera Presentación del Proyecto** |  | 1d | 2017-05-24 A | 2017-05-24 A | 100% |  |  | Chira; Huaroto; Salinas | 64h | 64h |
| 166 | 1.6.1.1 | Reunión Externa con Profesor | manual | 1d | 2017-05-24 A | 2017-05-24 A | 100% |  |  | Chira; Huaroto; Salinas | 24h | 24h |
| 167 | 1.6.1.2 | Acta de Reunión con acuerdos tomados | manual | 1d | 2017-05-24 A | 2017-05-24 A | 100% |  |  | Salinas | 8h | 8h |
| 168 | 1.6.1.3 | Traspaso de Información | manual | 1d | 2017-05-24 A | 2017-05-24 A | 100% |  |  | Chira | 8h | 8h |
| 169 | 1.6.2 | **Segunda Presentación del Proyecto** |  | 1d | 2017-06-19 A | 2017-06-19 A | 100% |  |  | Chira; Huaroto; Salinas | 80h | 80h |
| 170 | 1.6.2.1 | Reunión Externa con Profesor | manual | 1d | 2017-06-19 A | 2017-06-19 A | 100% |  |  | Chira; Huaroto; Salinas | 24h | 24h |
| 171 | 1.6.2.2 | Acta de Reunión con acuerdos tomados | manual | 1d | 2017-06-19 A | 2017-06-19 A | 100% |  |  | Chira; Huaroto; Salinas | 24h | 24h |
| 172 | 1.6.2.3 | Traspaso de Información | manual | 1d | 2017-06-19 A | 2017-06-19 A | 100% |  |  | Chira | 8h | 8h |
| 173 | 1.6.3 | **Tercera Presentación del Proyecto** |  | 1d | 2017-07-19 | 2017-07-19 |  |  | 0d | Chira; Huaroto; Salinas | 64h |  |
| 174 | 1.6.3.1 | Kick Off Meeting con Profesor | manual | 1d | 2017-07-19 | 2017-07-19 |  |  |  | Chira; Huaroto; Salinas | 24h |  |
| 175 | 1.6.3.2 | Acta de Reunión con acuerdos tomados | manual | 1d | 2017-07-19 | 2017-07-19 |  |  |  | Salinas | 8h |  |
| 176 | 1.6.3.3 | Traspaso de Información | manual | 1d | 2017-07-19 | 2017-07-19 |  |  |  | Chira | 8h |  |
